# Gantt EPSA

Schedule from GanttProject, 2019-06-27 to 2020-09-30, baseline: 15_05_2019.
EPSA

## Calendars

- Project calendar: Mon-Sun working.

## Resources

| Resource |
| --- |
| MJT |
| ARZ |
| TLS |
| PTN |
| CMI |
| NGO |
| MRI |
| ACO |
| TMN |
| PTS |
| TCN |
| ASE |
| VBU |
| CAD |
| MKI |
| MSO |
| PAX |
| EPZ |
| SGX |
| JMN |
| CLS |
| RMN |
| BMA |

## Schedule

| ID | WBS | Task | Type | Duration | Start | Finish | Predecessors | Baseline start | Baseline finish | Baseline duration | Resources |
| --- | --- | --- | --- | --- | --- | --- | --- | --- | --- | --- | --- |
| 1 | 1 | **Tops** |  | 363d | 2019-06-27 | 2020-06-23 |  | 2019-04-03 | 2020-02-16 | 320d |  |
| 2 | 1.1 | Top Appro | milestone | 0d | 2019-06-27 | 2019-06-27 |  | 2019-06-27 | 2019-06-27 | 0d |  |
| 3 | 1.2 | Top Saison | milestone | 0d | 2019-09-30 | 2019-09-30 |  | 2019-09-30 | 2019-09-30 | 0d |  |
| 4 | 1.3 | Top Synthèse | milestone | 0d | 2019-10-16 | 2019-10-16 |  | 2019-10-02 | 2019-10-02 | 0d |  |
| 5 | 1.4 | Top Copeau 1 | milestone | 0d | 2019-11-13 | 2019-11-13 |  | 2019-11-06 | 2019-11-06 | 0d |  |
| 6 | 1.5 | Top Copeau 2 | milestone | 0d | 2019-11-20 | 2019-11-20 |  | 2019-11-20 | 2019-11-20 | 0d |  |
| 7 | 1.6 | Top Organe | milestone | 0d | 2020-02-05 | 2020-02-05 |  | 2020-02-05 | 2020-02-05 | 0d |  |
| 8 | 1.7 | Top Véhicule | milestone | 0d | 2020-02-19 | 2020-02-19 |  | 2020-02-19 | 2020-02-19 | 0d |  |
| 9 | 1.8 | Top Moteur | milestone | 0d | 2020-03-04 | 2020-03-04 |  | 2020-03-04 | 2020-03-04 | 0d |  |
| 10 | 1.9 | Top Qualif | milestone | 0d | 2020-03-17 | 2020-03-17 |  | 2020-03-17 | 2020-03-17 | 0d |  |
| 11 | 1.10 | Top Compet | milestone | 0d | 2020-06-24 | 2020-06-24 |  | 2020-06-24 | 2020-06-24 | 0d |  |
| 12 | 2 | **Vacances ECL** |  | 127d | 2019-10-26 | 2020-02-29 |  |  |  |  |  |
| 13 | 2.1 | Toussaint |  | 9d | 2019-10-26 | 2019-11-03 |  |  |  |  |  |
| 14 | 2.2 | Noel |  | 16d | 2019-12-21 | 2020-01-05 |  |  |  |  |  |
| 15 | 2.3 | Hivers |  | 1d | 2020-02-29 | 2020-02-29 |  |  |  |  |  |
| 16 | 3 | **Vacances partenaires** |  | 341d | 2019-10-26 | 2020-09-30 |  |  |  |  |  |
| 17 | 3.1 | **Giraudière** |  | 72d | 2019-10-26 | 2020-01-05 |  |  |  |  |  |
| 18 | 3.1.1 | Toussaint |  | 9d | 2019-10-26 | 2019-11-03 |  |  |  |  |  |
| 19 | 3.1.2 | Noel |  | 16d | 2019-12-21 | 2020-01-05 |  |  |  |  |  |
| 20 | 3.2 | Boisard |  | 99d | 2020-06-24 | 2020-09-30 |  |  |  |  |  |
| 21 | 4 | **Global** |  | 363d | 2019-06-27 | 2020-06-23 |  |  |  |  |  |
| 22 | 4.1 | Livrables |  | 363d | 2019-06-27 | 2020-06-23 | 2, 11FF | 2019-05-08 | 2019-05-27 | 20d |  |
| 23 | 4.2 | Carnet de conception |  | 51d | 2019-08-01 | 2019-09-20 |  |  |  |  | TLS |
| 24 | 4.3 | Nomenclature |  | 51d | 2019-08-01 | 2019-09-20 |  |  |  |  | TLS |

| ID | WBS | Task | Duration | Start | Finish | Predecessors | Complete | Baseline start | Baseline finish | Baseline duration | Resources |
| --- | --- | --- | --- | --- | --- | --- | --- | --- | --- | --- | --- |
| 25 | 5 | **LAS** | 117d | 2019-08-19 | 2019-12-13 |  | 15% | 2019-05-08 | 2019-05-22 | 15d |  |
| 26 | 5.1 | **Cinématique** | 56d | 2019-08-19 | 2019-10-13 |  | 86% |  |  |  |  |
| 27 | 5.1.1 | Gabarit de châssis | 14d | 2019-09-16 | 2019-09-29 |  | 100% |  |  |  |  |
| 28 | 5.1.2 | Points de LAS avant | 42d | 2019-08-19 | 2019-09-29 |  | 100% |  |  |  | MKI; MSO; PAX |
| 29 | 5.1.3 | Points de LAS arrière | 35d | 2019-08-26 | 2019-09-29 |  | 100% |  |  |  | MKI; MSO; PAX |
| 30 | 5.1.4 | Seconde itération | 14d | 2019-09-30 | 2019-10-13 | 28, 29 |  |  |  |  | MKI; MSO; PAX |
| 31 | 5.2 | **Cas de charge** | 52d | 2019-09-23 | 2019-11-13 |  | 5% |  |  |  |  |
| 32 | 5.2.1 | Paul Clauzel | 3d | 2019-09-23 | 2019-09-25 |  | 100% |  |  |  | MKI |
| 33 | 5.2.2 | Modèle | 11d | 2019-09-26 | 2019-10-06 | 32 |  |  |  |  | MKI |
| 34 | 5.2.3 | Cas de charge | 14d | 2019-10-07 | 2019-10-20 | 33 |  |  |  |  | MKI |
| 35 | 5.2.4 | Vérification | 7d | 2019-10-21 | 2019-10-27 | 34 |  |  |  |  | MKI |
| 36 | 5.2.5 | Itérations | 7d | 2019-10-28 | 2019-11-03 | 35 |  |  |  |  | MKI |
| 37 | 5.2.6 | Fin des cas de charges | 10d | 2019-11-04 | 2019-11-13 | 36 |  |  |  |  | MKI |
| 38 | 5.3 | **Roue équipée** | 117d | 2019-08-19 | 2019-12-13 |  | 12% |  |  |  |  |
| 39 | 5.3.1 | Choix des pneus | 12d | 2019-08-19 | 2019-08-30 | 28SS | 100% |  |  |  | MKI; MSO |
| 40 | 5.3.2 | Architecture | 7d | 2019-10-14 | 2019-10-20 |  |  |  |  |  | MSO |
| 41 | 5.3.3 | Modifications | 7d | 2019-10-14 | 2019-10-20 | 40SS |  |  |  |  | MSO |
| 42 | 5.3.4 | Frette de frein | 7d | 2019-10-21 | 2019-10-27 | 41 |  |  |  |  | MSO |
| 43 | 5.3.5 | Ebauche CATIA | 14d | 2019-10-28 | 2019-11-10 | 42 |  |  |  |  | MSO |
| 44 | 5.3.6 | Retour points de LAS | 14d | 2019-10-28 | 2019-11-10 | 43SS |  |  |  |  | MSO |
| 45 | 5.3.7 | Optimisation | 26d | 2019-11-11 | 2019-12-06 | 43 |  |  |  |  | MSO |
| 46 | 5.3.8 | Fabricabilité | 7d | 2019-12-07 | 2019-12-13 | 45 |  |  |  |  | MSO |
| 47 | 5.4 | **Triangles** | 56d | 2019-10-07 | 2019-12-01 |  |  |  |  |  |  |
| 48 | 5.4.1 | Choix réglage | 7d | 2019-10-07 | 2019-10-13 |  |  |  |  |  | MKI |
| 49 | 5.4.2 | Choix rotules | 7d | 2019-10-14 | 2019-10-20 | 48 |  |  |  |  | MKI |
| 50 | 5.4.3 | Choix entretoises | 7d | 2019-10-14 | 2019-10-20 | 48 |  |  |  |  | MKI |
| 51 | 5.4.4 | Dimensionnement biellettes | 7d | 2019-10-21 | 2019-10-27 | 48, 49 |  |  |  |  | MKI |
| 52 | 5.4.5 | Dimensionnement visserie | 7d | 2019-10-14 | 2019-10-20 | 48 |  |  |  |  | MKI |
| 53 | 5.4.6 | Dimenssionnement des tubes | 7d | 2019-10-21 | 2019-10-27 | 34, 48 |  |  |  |  | MKI |
| 54 | 5.4.7 | Dimensionnement des inserts | 7d | 2019-10-28 | 2019-11-03 | 53 |  |  |  |  | MKI |
| 55 | 5.4.8 | Essais collages | 28d | 2019-11-04 | 2019-12-01 | 54 |  |  |  |  | MKI |

Notes:
- 32: Le contacter pour la licence Mecamaster
- 34: Premiers cas de charges
- 35: A voir avec Paul Clozel
- 41: Recherche des éléments où il faut investir du temps
- 42: Etudier la faisabilité d'un frette combiné au moyeu
- 48: Voir Claude Rouelle : pas différents de chaque côté des biellettes
- 55: Fatigue

| ID | WBS | Task | Duration | Start | Finish | Predecessors | Complete | Baseline start | Baseline finish | Baseline duration | Resources |
| --- | --- | --- | --- | --- | --- | --- | --- | --- | --- | --- | --- |
| 56 | 5.5 | **Suspension** | 21d | 2019-09-30 | 2019-10-20 |  |  |  |  |  |  |
| 57 | 5.5.1 | Basculeurs | 14d | 2019-09-30 | 2019-10-13 |  |  |  |  |  | PAX |
| 58 | 5.5.2 | Pivot | 7d | 2019-10-14 | 2019-10-20 | 57 |  |  |  |  | PAX |
| 59 | 5.6 | **Anti-roulis** | 28d | 2019-09-30 | 2019-10-27 |  |  |  |  |  |  |
| 60 | 5.6.1 | Modèle efforts | 14d | 2019-09-30 | 2019-10-13 |  |  |  |  |  | PAX |
| 61 | 5.6.2 | Dimenssionnement de la barre de torsion | 14d | 2019-10-14 | 2019-10-27 | 60 |  |  |  |  | PAX |
| 62 | 5.6.3 | Couteaux | 14d | 2019-09-30 | 2019-10-13 |  |  |  |  |  | PAX |
| 63 | 5.6.4 | Pivot | 7d | 2019-10-14 | 2019-10-20 | 62 |  |  |  |  | PAX |
| 64 | 5.6.5 | Coussinets | 7d | 2019-10-21 | 2019-10-27 | 63 |  |  |  |  | PAX |
| 65 | 5.7 | **Direction** | 49d | 2019-09-23 | 2019-11-10 |  | 14% |  |  |  | SGX |
| 66 | 5.7.1 | Cinématique | 14d | 2019-09-23 | 2019-10-06 |  | 50% |  |  |  | MKI; SGX |
| 67 | 5.7.2 | Cardan | 14d | 2019-10-07 | 2019-10-20 | 66 |  |  |  |  | SGX |
| 68 | 5.7.3 | Colonne de direction | 7d | 2019-10-21 | 2019-10-27 | 67 |  |  |  |  | SGX |
| 69 | 5.7.4 | Finalisation cinématique | 7d | 2019-10-28 | 2019-11-03 | 28, 68 |  |  |  |  | SGX |
| 70 | 5.7.5 | Pivot et manchon | 7d | 2019-11-04 | 2019-11-10 | 69 |  |  |  |  | SGX |
| 71 | 5.8 | **Freinage** | 56d | 2019-09-23 | 2019-11-17 |  | 9% |  |  |  | EPZ |
| 72 | 5.8.1 | Répartition freinage | 14d | 2019-09-23 | 2019-10-06 |  | 50% |  |  |  |  |
| 73 | 5.8.2 | Dimenssionnement disques | 21d | 2019-10-07 | 2019-10-27 | 72 |  |  |  |  |  |
| 74 | 5.8.3 | Dimenssionnement étrier | 21d | 2019-10-07 | 2019-10-27 | 72 |  |  |  |  |  |
| 75 | 5.8.4 | Durites | 21d | 2019-10-28 | 2019-11-17 | 74 |  |  |  |  |  |
| 76 | 5.9 | **Pédalier** | 49d | 2019-09-16 | 2019-11-03 |  |  |  |  |  |  |
| 77 | 5.9.1 | Accélérateur | 35d | 2019-09-16 | 2019-10-20 |  |  |  |  |  | JMN |
| 78 | 5.9.2 | Frein | 35d | 2019-09-30 | 2019-11-03 |  |  |  |  |  | JMN |
| 79 | 6 | **Frame** | 100d | 2019-08-12 | 2019-11-19 |  | 10% | 2019-05-08 | 2019-05-18 | 11d |  |
| 80 | 6.1 | **Structure tubulaire** | 98d | 2019-08-12 | 2019-11-17 |  | 23% |  |  |  |  |
| 81 | 6.1.1 | Premières esquisses | 28d | 2019-08-12 | 2019-09-08 |  | 100% |  |  |  | CMI |
| 82 | 6.1.2 | Points de LAS | 21d | 2019-09-09 | 2019-09-29 | 81 | 30% |  |  |  | CMI |
| 83 | 6.1.3 | Moteur - Echappement | 21d | 2019-09-09 | 2019-09-29 | 81 |  |  |  |  | CMI |
| 84 | 6.1.4 | Finalisation filaire | 14d | 2019-09-16 | 2019-09-29 |  |  |  |  |  | CMI |
| 85 | 6.1.5 | Seconde itération | 14d | 2019-09-30 | 2019-10-13 | 82, 83, 84 |  |  |  |  | CMI |
| 86 | 6.1.6 | Vérif règlement | 7d | 2019-10-14 | 2019-10-20 | 85 |  |  |  |  | CMI |
| 87 | 6.1.7 | Raideur en torsions | 14d | 2019-10-14 | 2019-10-27 |  |  |  |  |  | CMI |
| 88 | 6.1.8 | Autres cas de charge | 14d | 2019-10-21 | 2019-11-03 |  |  |  |  |  | CMI |
| 89 | 6.1.9 | Vérif règlement | 14d | 2019-11-04 | 2019-11-17 | 87, 88 |  |  |  |  | CMI |
| 90 | 6.2 | Ergonomie | 49d | 2019-09-30 | 2019-11-17 | 89FF |  |  |  |  | CMI |

Notes:
- 60: Pour la démarche
- 61: Pour la démarche
- 62: Pour la démarche
- 63: Pour la démarche
- 64: Pour la démarche
- 71: En collaboration avec la roue équipée et le pédalier

| ID | WBS | Task | Duration | Start | Finish | Predecessors | Complete | Resources |
| --- | --- | --- | --- | --- | --- | --- | --- | --- |
| 91 | 6.3 | **Equipements** | 58d | 2019-09-23 | 2019-11-19 |  |  |  |
| 92 | 6.3.1 | Suivi des chappes | 58d | 2019-09-23 | 2019-11-19 | 6FF |  | TLS |
| 93 | 6.3.2 | Anti-intrusion plate | 35d | 2019-10-14 | 2019-11-17 | 85 |  | CMI |
| 94 | 6.3.3 | Pare-feu | 35d | 2019-10-14 | 2019-11-17 | 85 |  | CMI |
| 95 | 6.3.4 | Fond plat | 35d | 2019-10-14 | 2019-11-17 | 85 |  | PTS |
| 96 | 7 | **Aéro** | 91d | 2019-08-19 | 2019-11-17 |  | 19% |  |
| 97 | 7.1 | **Fabrication** | 40d | 2019-09-04 | 2019-10-13 |  | 57% |  |
| 98 | 7.1.1 | **Démarchage** | 40d | 2019-09-04 | 2019-10-13 |  | 57% |  |
| 99 | 7.1.1.1 | Rédaction du mail | 7d | 2019-09-04 | 2019-09-10 |  | 100% | ACO |
| 100 | 7.1.1.2 | Recherche de contacts | 40d | 2019-09-04 | 2019-10-13 |  | 50% | ACO |
| 101 | 7.2 | **Méthode numérique** | 35d | 2019-08-19 | 2019-09-22 |  |  |  |
| 102 | 7.2.1 | Simulation mécanique | 35d | 2019-08-19 | 2019-09-22 |  |  | NGO |
| 103 | 7.3 | **Carrosserie** | 63d | 2019-09-16 | 2019-11-17 |  | 22% |  |
| 104 | 7.3.1 | REX et étude concurrence | 14d | 2019-09-16 | 2019-09-29 |  | 100% | PTS |
| 105 | 7.3.2 | Premier version | 14d | 2019-09-30 | 2019-10-13 | 84, 104 |  | PTS |
| 106 | 7.3.3 | Optimisation aéro | 14d | 2019-10-14 | 2019-10-27 | 105 |  | PTS |
| 107 | 7.3.4 | Seconde itération | 7d | 2019-10-28 | 2019-11-03 | 85, 106 |  | PTS |
| 108 | 7.3.5 | Fixation aéro | 14d | 2019-11-04 | 2019-11-17 | 107 |  | PTS |
| 109 | 7.4 | **Ailes** | 57d | 2019-09-09 | 2019-11-04 |  | 12% |  |
| 110 | 7.4.1 | Étude aéro arrière | 28d | 2019-09-09 | 2019-10-06 |  | 50% | MRI; ACO |
| 111 | 7.4.2 | Étude aéro avant | 36d | 2019-09-30 | 2019-11-04 |  |  | MRI; ACO |
| 112 | 7.4.3 | Volume enveloppe | 7d | 2019-09-30 | 2019-10-06 |  |  |  |
| 113 | 7.4.4 | Cas de charges des ailes | 7d | 2019-09-30 | 2019-10-06 |  |  |  |
| 114 | 7.4.5 | Structure interne | 21d | 2019-10-07 | 2019-10-27 | 113 |  |  |
| 115 | 7.4.6 | Méthode d'attache arrière | 14d | 2019-10-07 | 2019-10-20 | 113 |  | TCN |

Notes:
- 114: Pour dimenssionnement / Raideur du tube / Puis nombre de nervure
- 115: Etude concurrence / Soltuion légère et réglable

| ID | WBS | Task | Duration | Start | Finish | Predecessors | Complete | Baseline start | Baseline finish | Baseline duration | Resources |
| --- | --- | --- | --- | --- | --- | --- | --- | --- | --- | --- | --- |
| 116 | 7.5 | **Ouies** | 14d | 2019-09-30 | 2019-10-13 |  |  |  |  |  |  |
| 117 | 7.5.1 | Concept ouies | 14d | 2019-09-30 | 2019-10-13 |  |  |  |  |  |  |
| 118 | 7.6 | **Diffuseur** | 14d | 2019-09-30 | 2019-10-13 |  |  |  |  |  |  |
| 119 | 7.6.1 | Concept aéro | 14d | 2019-09-30 | 2019-10-13 |  |  |  |  |  | MRI; ACO |
| 120 | 8 | **Motorisation** | 28d | 2019-09-30 | 2019-10-27 |  | 4% | 2019-05-06 | 2019-05-20 | 15d |  |
| 121 | 8.1 | **Bride guillotine** | 14d | 2019-09-30 | 2019-10-13 |  |  |  |  |  |  |
| 122 | 8.1.1 | Analyser le diaphragme | 14d | 2019-09-30 | 2019-10-13 |  |  |  |  |  | CAD |
| 123 | 8.1.2 | CdCF bride guillotine | 7d | 2019-09-30 | 2019-10-06 |  |  |  |  |  | CAD |
| 124 | 8.1.3 | Choisir l'architecture | 7d | 2019-10-07 | 2019-10-13 |  |  |  |  |  | CAD |
| 125 | 8.2 | **Admission** | 14d | 2019-09-30 | 2019-10-13 |  |  |  |  |  |  |
| 126 | 8.2.1 | Longueur des tubulures | 7d | 2019-09-30 | 2019-10-06 |  |  |  |  |  | TLS |
| 127 | 8.2.2 | Contacter Michele Salvia | 7d | 2019-09-30 | 2019-10-06 |  |  |  |  |  | TLS |
| 128 | 8.2.3 | Choix matériau | 7d | 2019-10-07 | 2019-10-13 | 127 |  |  |  |  | TLS |
| 129 | 8.2.4 | Début du CATIA de l'admission | 7d | 2019-09-30 | 2019-10-06 |  |  |  |  |  | TLS |
| 130 | 8.2.5 | CatPart v1 | 7d | 2019-10-07 | 2019-10-13 | 129 |  |  |  |  | TLS |
| 131 | 8.3 | **Echappement** | 14d | 2019-09-30 | 2019-10-13 |  |  |  |  |  |  |
| 132 | 8.3.1 | Démarcher des partenaire | 7d | 2019-09-30 | 2019-10-06 |  |  |  |  |  | ASE |
| 133 | 8.3.2 | Trouver le diamètre Yoshimura | 7d | 2019-09-30 | 2019-10-06 |  |  |  |  |  | ASE |
| 134 | 8.3.3 | Récupération de celui d'Optimus?? | 14d | 2019-09-30 | 2019-10-13 |  |  |  |  |  | MJT |
| 135 | 8.4 | **Carto** | 7d | 2019-10-21 | 2019-10-27 |  |  |  |  |  |  |
| 136 | 8.4.1 | Prevoir passage au banc de Givors | 7d | 2019-10-21 | 2019-10-27 |  |  |  |  |  | MJT |
| 137 | 8.5 | **Refroidissement** | 14d | 2019-09-30 | 2019-10-13 |  | 25% |  |  |  |  |
| 138 | 8.5.1 | Terminer le choix ouies, radiateur | 7d | 2019-09-30 | 2019-10-06 |  | 100% |  |  |  | ASE |
| 139 | 8.5.2 | Etude refroidissement | 7d | 2019-10-07 | 2019-10-13 |  |  |  |  |  | ASE |
| 140 | 8.5.3 | Passage de vitesse | 7d | 2019-10-07 | 2019-10-13 |  |  |  |  |  | ASE; BMA |
| 141 | 8.5.4 | Règlement moteur | 7d | 2019-10-07 | 2019-10-13 |  |  |  |  |  | ASE |

Notes:
- 122: Attention au pb de capteur
- 139: Avec deux radiateurs découplables?
- 140: Avec BMR

| ID | WBS | Task | Duration | Start | Finish | Predecessors | Complete | Baseline start | Baseline finish | Baseline duration | Resources |
| --- | --- | --- | --- | --- | --- | --- | --- | --- | --- | --- | --- |
| 142 | 8.6 | **Circuit d'essence** | 7d | 2019-10-07 | 2019-10-13 |  |  |  |  |  |  |
| 143 | 8.6.1 | Commande rle tube de remplissage | 7d | 2019-10-07 | 2019-10-13 |  |  |  |  |  | ASE |
| 144 | 8.6.2 | Circuit d'essence | 7d | 2019-10-07 | 2019-10-13 |  |  |  |  |  | ASE |
| 145 | 8.7 | **Transmission secondaire** | 14d | 2019-09-30 | 2019-10-13 |  |  |  |  |  |  |
| 146 | 8.7.1 | Analyser le déplacement des axes | 7d | 2019-09-30 | 2019-10-06 |  |  |  |  |  | VBU |
| 147 | 8.7.2 | Préssenter les cas de charges | 7d | 2019-09-30 | 2019-10-06 |  |  |  |  |  | VBU |
| 148 | 8.7.3 | CdCF quantifié du système | 7d | 2019-09-30 | 2019-10-06 |  |  |  |  |  | VBU |
| 149 | 8.7.4 | Efforts subis par les axes de transmission | 7d | 2019-10-07 | 2019-10-13 |  |  |  |  |  | VBU |
| 150 | 9 | **SEISM** | 84d | 2019-09-02 | 2019-11-24 |  | 19% | 2019-05-10 | 2019-05-14 | 5d |  |
| 151 | 9.1 | **Faisceau** | 84d | 2019-09-02 | 2019-11-24 |  | 31% |  |  |  |  |
| 152 | 9.1.1 | Architecture faisceau | 14d | 2019-09-02 | 2019-09-15 |  | 100% |  |  |  | CLS |
| 153 | 9.1.2 | Schema faisceau | 28d | 2019-09-16 | 2019-10-13 | 152 | 100% |  |  |  | CLS |
| 154 | 9.1.3 | Batterie | 14d | 2019-09-30 | 2019-10-13 |  |  |  |  |  | CLS |
| 155 | 9.1.4 | Dimensionnement câble | 14d | 2019-10-07 | 2019-10-20 |  |  |  |  |  | CLS |
| 156 | 9.1.5 | Placer les boîtes | 14d | 2019-10-14 | 2019-10-27 |  |  |  |  |  | CLS |
| 157 | 9.1.6 | Contacter Souriaux | 7d | 2019-09-16 | 2019-09-22 |  |  |  |  |  | CLS |
| 158 | 9.1.7 | Choix connecteur | 14d | 2019-10-14 | 2019-10-27 | 157 |  |  |  |  | CLS |
| 159 | 9.1.8 | Modèle CATIA | 28d | 2019-10-28 | 2019-11-24 | 156, 158 |  |  |  |  | CLS |
| 160 | 9.2 | **Passage de rapport** | 70d | 2019-09-02 | 2019-11-10 |  | 5% |  |  |  |  |
| 161 | 9.2.1 | Dimensionnement moteur | 28d | 2019-09-02 | 2019-09-29 |  | 10% |  |  |  | BMA |
| 162 | 9.2.2 | Dimensionnement réducteur | 28d | 2019-09-02 | 2019-09-29 |  | 10% |  |  |  | BMA |
| 163 | 9.2.3 | Reprendre le code | 28d | 2019-09-30 | 2019-10-27 | 161, 162 |  |  |  |  | BMA |
| 164 | 9.2.4 | Shield | 28d | 2019-10-14 | 2019-11-10 |  |  |  |  |  | BMA |

Notes:
- 145: Ressources: / ASE et une recrue semble correct et moins risqué que deux recrues. / Une des recrues sera donc affecté au circuit d'essence.
- 153: HV / LV / Acquisition de données
- 162: Choisir entre Atomix et Optimus
- 164: Inclure la connection CAN
